How a schedule from OmniPlan changed from version to version. A marks actual dates.

## Version 1 (saved 2011-06-09)

Note of the change: Added OmniPlan2 plan for the Java Client, as well as a (badly) exported PDF version.

| ID | WBS | Task | Start | Predecessors | Complete |
| --- | --- | --- | --- | --- | --- |
| 1 | 1 | **Code Style Documentation and Training** |  |  |  |
| 2 |  | Choose coding style |  |  | 100% |
| 3 |  | Document coding style | 2011-06-14 | 2 |  |
| 4 |  | Train team in Javadoc | 2011-06-13 |  |  |
| 5 |  | Train team in Junit | 2011-06-15 |  |  |
| 6 | 2 | **Maven** |  | 1 |  |
| 7 |  | Train domain expert | 2011-06-16 |  |  |
| 8 |  | Verify skeleton follows good practices | 2011-06-20 | 7 |  |
| 9 | 3 | **Jenkins Integration** |  | 8 |  |
| 10 |  | Contact Eday and arrange Jenkins building of skeleton | 2011-06-21 |  |  |
| 11 | 4 | **User Documentation** |  | 1 |  |
| 12 |  | Train Sphinx domain expert | 2011-06-21 |  |  |
| 13 |  | Contact Sponsor and determine how user documentation will be delievered | 2011-06-16 |  |  |
| 14 |  | Write narrative user documentation | 2011-07-28 | 28FF, 13FF, 12 |  |
| 15 | 5 | **Research and Design** |  |  |  |
| 16 | 5.1 | **Async Model** |  |  |  |
| 17 |  | Research Async in Java | 2011-06-15 |  | 60% |
| 18 |  | Decide on Callback vs Futures | 2011-06-22 | 17 |  |
| 19 | 5.2 | **Server Communication** |  |  |  |
| 20 | 5.2.1 | **HTTP** |  |  |  |
| 21 |  | Research HTTP Libraries | 2011-06-15 |  | 62% |
| 22 |  | Select HTTP Library | 2011-06-21 | 21, 17 |  |
| 23 | 5.2.2 | **JSON** |  |  |  |
| 24 |  | Research JSON Libraries | 2011-06-25 |  |  |
| 25 |  | Select JSON Library | 2011-06-26 | 24 |  |
| 26 |  | Design interface of blocking API | 2011-07-04 |  |  |
| 27 |  | Adapt blocking interface for Async use | 2011-07-12 | 18, 26, 41 |  |
| 28 | 6 | **Implementation and Code Documentation** |  | 1, 8 |  |
| 29 | 6.1 | **Blocking API** |  |  |  |
| 30 | 6.1.1 | **Memory Backend** |  |  |  |
| 31 |  | Implement Memory Backend | 2011-06-21 |  | 75% |
| 32 |  | Document Memory Backend | 2011-06-27 | 31FF, 4 |  |
| 33 |  | Create Unit Tests for Memory Backend | 2011-06-28 | 31FF |  |
| 34 |  | Implement Blocking Frontend | 2011-06-28 | 30FF |  |
| 35 |  | Document Blocking Frontend | 2011-06-30 | 34FF |  |
| 36 |  | Create Blocking Fronend Unit Test Suite | 2011-07-03 | 5, 34 |  |
| 37 | 6.1.5 | **Blocking HTTP Backend** |  |  |  |
| 38 |  | Implement Blocking HTTP Backend | 2011-06-27 | 25, 22 |  |
| 39 |  | Document Blocking HTTP Backend | 2011-07-06 | 38FF |  |
| 40 |  | Create Unit Tests for Async HTTP Backend | 2011-07-02 | 38FF |  |
| 41 |  | Extend Blocking Frontend to support HTTP | 2011-07-07 | 37 |  |
| 42 |  | Jenkins-Run Integration Tests for Blocking API | 2011-07-09 | 10, 36, 41 |  |
| 43 | 6.2 | **Async API** |  | 27 |  |
| 44 | 6.2.1 | **Async HTTP Backend** |  |  |  |
| 45 |  | Implement Async HTTP Backend | 2011-07-15 |  |  |
| 46 |  | Document Async HTTP Backend | 2011-07-21 | 45FF |  |
| 47 |  | Create Unit Tests for Async HTTP Backend | 2011-07-22 | 45FF |  |
| 48 |  | Implement Async Frontend | 2011-07-25 | 44 |  |
| 49 |  | Document Async Frontend | 2011-07-26 | 48FF |  |
| 50 |  | Adapt Test Suite to Async Frontend | 2011-07-22 | 41, 48FF |  |

## Version 2 (saved 2011-06-09)

Note of the change: Fixed some bad constraints, the pdf of the Java plan is much more readable now.

Changed:

| ID | Task | Other |
| --- | --- | --- |
| 14 | Write narrative user documentation | resources Developer B; Architect; Developer A → Developer B; Architect |

## Version 3 (saved 2011-06-09)

Note of the change: Minor leveling changes.

Changed:

| ID | Task | Start |
| --- | --- | --- |
| 14 | Write narrative user documentation | 2011-07-28 → 2011-08-01 (+4d) |
| 18 | Decide on Callback vs Futures | 2011-06-22 → 2011-06-19 (-3d) |
| 22 | Select HTTP Library | 2011-06-21 → 2011-06-22 (+1d) |
| 25 | Select JSON Library | 2011-06-26 → 2011-06-27 (+1d) |
| 26 | Design interface of blocking API | 2011-07-04 → 2011-07-05 (+1d) |
| 27 | Adapt blocking interface for Async use | 2011-07-12 → 2011-07-14 (+2d) |
| 33 | Create Unit Tests for Memory Backend | 2011-06-28 → 2011-06-29 (+1d) |
| 34 | Implement Blocking Frontend | 2011-06-28 → 2011-06-29 (+1d) |
| 35 | Document Blocking Frontend | 2011-06-30 → 2011-07-01 (+1d) |
| 36 | Create Blocking Fronend Unit Test Suite | 2011-07-03 → 2011-07-04 (+1d) |
| 38 | Implement Blocking HTTP Backend | 2011-06-27 → 2011-06-28 (+1d) |
| 39 | Document Blocking HTTP Backend | 2011-07-06 → 2011-07-07 (+1d) |
| 40 | Create Unit Tests for Async HTTP Backend | 2011-07-02 → 2011-07-03 (+1d) |
| 41 | Extend Blocking Frontend to support HTTP | 2011-07-07 → 2011-07-09 (+2d) |
| 42 | Jenkins-Run Integration Tests for Blocking API | 2011-07-09 → 2011-07-11 (+2d) |
| 45 | Implement Async HTTP Backend | 2011-07-15 → 2011-07-17 (+2d) |
| 46 | Document Async HTTP Backend | 2011-07-21 → 2011-07-24 (+3d) |
| 47 | Create Unit Tests for Async HTTP Backend | 2011-07-22 → 2011-07-25 (+3d) |
| 48 | Implement Async Frontend | 2011-07-25 → 2011-07-28 (+3d) |
| 49 | Document Async Frontend | 2011-07-26 → 2011-07-30 (+4d) |
| 50 | Adapt Test Suite to Async Frontend | 2011-07-22 → 2011-07-25 (+3d) |

## Version 4 (saved 2011-06-09)

Note of the change: Many Refinements to the Java Plan.

Added:

| ID | Task | Start | Predecessors | Resources |
| --- | --- | --- | --- | --- |
| 11 | Arrange for Jenkins to run a Burrow Server for Functional Tests | 2011-06-18 | 10 | Developer A |
| 44 | **Async Memory Backend** |  |  |  |
| 45 | Implement Async Reactor for Memory Backend | 2011-07-09 |  | Architect |
| 46 | Document Memory Reactor | 2011-07-13 | 45FF | Architect |

Removed: 40 Create Unit Tests for Async HTTP Backend; 47 Create Unit Tests for Async HTTP Backend

Changed:

| ID | Task | Start | Predecessors | Other |
| --- | --- | --- | --- | --- |
| 3 | Document coding style | 2011-06-14 → 2011-06-13 (-1d) |  |  |
| 5 | Train team in Junit | 2011-06-15 → 2011-06-14 (-1d) |  |  |
| 7 | Train domain expert | 2011-06-16 → 2011-06-15 (-1d) |  |  |
| 8 | Verify skeleton follows good practices | 2011-06-20 → 2011-06-17 (-3d) |  |  |
| 10 | Contact Eday and arrange Jenkins building of skeleton | 2011-06-21 → 2011-06-18 (-3d) |  |  |
| 13 | Train Sphinx domain expert | 2011-06-21 → 2011-06-18 (-3d) |  |  |
| 14 | Contact Sponsor and determine how user documentation will be delievered | 2011-06-16 → 2011-06-15 (-1d) |  |  |
| 15 | Write narrative user documentation | 2011-08-01 → 2011-07-22 (-10d) |  |  |
| 18 | Research Async in Java | 2011-06-15 → 2011-06-14 (-1d) |  |  |
| 19 | Decide on Callback vs Futures | 2011-06-19 → 2011-06-18 (-1d) |  |  |
| 22 | Research HTTP Libraries | 2011-06-15 → 2011-06-14 (-1d) |  |  |
| 23 | Select HTTP Library | 2011-06-22 → 2011-06-18 (-4d) |  |  |
| 25 | Research JSON Libraries | 2011-06-25 → 2011-06-22 (-3d) |  |  |
| 26 | Select JSON Library | 2011-06-27 → 2011-06-23 (-4d) |  |  |
| 27 | Design interface of blocking API | 2011-07-05 → 2011-06-25 (-10d) |  |  |
| 28 | Adapt blocking interface for Async use | 2011-07-14 → 2011-07-07 (-7d) |  |  |
| 32 | Implement Memory Backend | 2011-06-21 → 2011-06-18 (-3d) |  |  |
| 33 | Document Memory Backend | 2011-06-27 → 2011-06-23 (-4d) |  |  |
| 34 | Create Direct Unit Tests for Memory Backend | 2011-06-29 → 2011-06-24 (-5d) |  | was named Create Unit Tests for Memory Backend |
| 35 | Implement Blocking Frontend | 2011-06-29 → 2011-06-23 (-6d) |  |  |
| 36 | Document Blocking Frontend | 2011-07-01 → 2011-06-25 (-6d) |  |  |
| 37 | Create Blocking Fronend Unit Test Suite | 2011-07-04 → 2011-06-28 (-6d) |  |  |
| 39 | Implement Blocking HTTP Backend | 2011-06-28 → 2011-06-30 (+2d) |  |  |
| 40 | Document Blocking HTTP Backend | 2011-07-07 → 2011-07-05 (-2d) |  |  |
| 41 | Extend Blocking Frontend to support HTTP | 2011-07-09 → 2011-07-06 (-3d) |  | resources Developer B → Architect |
| 42 | Develop Integration Tests | 2011-07-11 → 2011-07-02 (-9d) | 10, 37, 41 → 37, 41FF, 11 | was named Jenkins-Run Integration Tests for Blocking API; resources Architect; Developer A → Developer B |
| 47 | Implement Async Frontend | 2011-07-28 → 2011-07-13 (-15d) | 50 → 45 |  |
| 48 | Document Async Frontend | 2011-07-30 → 2011-07-14 (-16d) |  |  |
| 49 | Adapt Test Suite to Async Frontend | 2011-07-25 → 2011-07-14 (-11d) | 41, 47FF → 41, 47 |  |
| 50 | **Async HTTP Backend** |  | none → 44 |  |
| 51 | Implement Async HTTP Backend | 2011-07-17 → 2011-07-19 (+2d) |  |  |
| 52 | Document Async HTTP Backend | 2011-07-24 → 2011-07-25 (+1d) |  | resources Architect → Developer A |
